Schedule from MS Project, 2018-09-03 to 2018-12-20, costs in R$, A marks actual dates.

## Calendars

- Padrão: Mon-Fri 09:00-12:00, 13:00-18:00; Sat-Sun off.

## Resources

| Resource | Rate |
| --- | --- |
| Kevin | 150 |
| Rodrigo | 150 |
| Cliente |  |
| Gp Externo | 200 |
| Mm |  |
| Adler | 300 |
| Lucas | 150 |
| Thiago | 150 |

## Schedule

| ID | WBS | Task | Type | Duration | Start | Finish | Predecessors | Complete | Remaining | Actual finish | Baseline start | Baseline finish | Baseline duration | Constraint | Resources | Work | Actual work | Cost | Baseline cost | Actual cost |
| --- | --- | --- | --- | --- | --- | --- | --- | --- | --- | --- | --- | --- | --- | --- | --- | --- | --- | --- | --- | --- |
| 1 | 1 | **Sistema de Integração de Serviços** |  | 26d | 2018-09-03 09:00 A | 2018-10-06 18:00 |  | 17% | 21.64d |  | 2018-09-03 09:00 | 2018-10-06 18:00 | 26d |  |  | 234.94h | 73.67h | 36,231.25 | 36,231.25 | 11,247.5 |
| 2 | 1.1 | **Prospecção** |  | 3d | 2018-09-03 09:00 A | 2018-09-05 18:00 |  | 100% |  | 2018-09-03 15:18 | 2018-09-03 09:00 | 2018-09-05 18:00 | 3d |  |  | 10.9h | 10.9h | 1,505 | 1,505 | 1,505 |
| 3 | 1.1.1 | **PTEC** |  | 1.09d | 2018-09-03 09:00 A | 2018-09-04 09:45 |  | 100% |  | 2018-09-03 14:00 | 2018-09-03 09:00 | 2018-09-04 09:45 | 1.09d |  |  | 6.5h | 6.5h | 975 | 975 | 975 |
| 4 | 1.1.1.1 | Estudar Dominio de Aplicação |  | 0.25d | 2018-09-03 09:00 A | 2018-09-03 11:00 A |  | 100% |  |  | 2018-09-03 09:00 | 2018-09-03 11:00 | 0.25d |  | Kevin | 2h | 2h | 300 | 300 | 300 |
| 5 | 1.1.1.2 | Reunir-se com o fornecedor de requisitos |  | 0.25d | 2018-09-03 09:00 A | 2018-09-03 14:00 A | 4 | 100% |  |  | 2018-09-03 09:00 | 2018-09-03 14:00 | 0.25d |  | Lucas | 2h | 2h | 300 | 300 | 300 |
| 6 | 1.1.1.3 | Redigir PTEC |  | 0.25d | 2018-09-03 09:00 A | 2018-09-03 11:00 A | 5 | 100% |  |  | 2018-09-03 09:00 | 2018-09-03 11:00 | 0.25d |  | Thiago | 2h | 2h | 300 | 300 | 300 |
| 7 | 1.1.1.4 | Revisar proposta Tecnica |  | 0.28d | 2018-09-03 09:00 A | 2018-09-03 11:15 A | 6 | 100% |  |  | 2018-09-03 09:00 | 2018-09-03 11:15 | 0.28d |  | Rodrigo | 0.5h | 0.5h | 75 | 75 | 75 |
| 8 | 1.1.1.5 | Aprovar PTEC | milestone | 0d | 2018-09-03 09:00 A | 2018-09-03 09:00 A | 7 | 100% |  |  | 2018-09-03 09:00 | 2018-09-03 09:00 | 0d |  | Cliente |  |  |  |  |  |
| 9 | 1.1.2 | **Es. Prel. Tam.** |  | 0.35d | 2018-09-03 09:00 A | 2018-09-03 11:48 |  | 100% |  | 2018-09-03 10:48 | 2018-09-03 09:00 | 2018-09-03 11:48 | 0.35d |  |  | 1.4h | 1.4h | 80 | 80 | 80 |
| 10 | 1.1.2.1 | Estimar tamanho do projeto |  | 0.12d | 2018-09-03 09:00 A | 2018-09-03 10:00 A | 7 | 100% |  |  | 2018-09-03 09:00 | 2018-09-03 10:00 | 0.12d |  | Thiago | 1h | 1h |  |  |  |
| 11 | 1.1.2.2 | Revisar estimativa de tamanho do projeto |  | 0.23d | 2018-09-03 09:00 A | 2018-09-03 10:48 A | 10 | 100% |  |  | 2018-09-03 09:00 | 2018-09-03 10:48 | 0.23d |  | Gp Externo | 0.4h | 0.4h | 80 | 80 | 80 |
| 12 | 1.1.3 | **Es. Prel. Cronograma e orçamento.** |  | 1d | 2018-09-03 09:00 A | 2018-09-03 18:00 |  | 100% |  | 2018-09-03 15:18 | 2018-09-03 09:00 | 2018-09-03 18:00 | 1d |  |  | 3h | 3h | 450 | 450 | 450 |
| 13 | 1.1.3.1 | Elaborar Cronograma e orçamento preliminares |  | 0.31d | 2018-09-03 09:00 A | 2018-09-03 15:18 A | 9 | 100% |  |  | 2018-09-03 09:00 | 2018-09-03 15:18 | 0.31d |  | Kevin | 2.5h | 2.5h | 375 | 375 | 375 |
| 14 | 1.1.3.2 | Revisar Cronograma e orçamento preliminares |  | 0.06d | 2018-09-03 09:00 A | 2018-09-03 09:30 A | 13, 10 | 100% |  |  | 2018-09-03 09:00 | 2018-09-03 09:30 | 0.06d |  | Lucas | 0.5h | 0.5h | 75 | 75 | 75 |
| 15 | 1.2 | **Análise** |  | 2d | 2018-09-04 09:00 A | 2018-09-05 18:00 |  | 100% |  | 2018-09-06 14:26 | 2018-09-04 09:00 | 2018-09-05 18:00 | 2d |  |  | 38h | 38h | 5,700 | 5,700 | 5,700 |
| 16 | 1.2.1 | **Documento de requisitos** |  | 2d | 2018-09-04 09:00 A | 2018-09-05 18:00 |  | 100% |  | 2018-09-06 14:18 | 2018-09-04 09:00 | 2018-09-05 18:00 | 2d |  |  | 23h | 23h | 3,450 | 3,450 | 3,450 |
| 17 | 1.2.1.1 | Reunir-se com o cliente |  | 0.38d | 2018-09-04 09:00 A | 2018-09-06 10:12 A | 14 | 100% |  |  | 2018-09-04 09:00 | 2018-09-06 10:12 | 0.38d |  | Rodrigo; Kevin; Lucas; Thiago | 6h | 6h | 900 | 900 | 900 |
| 18 | 1.2.1.2 | Elaborar DRE |  | 0.72d | 2018-09-04 09:00 A | 2018-09-06 11:48 A | 17 | 100% |  |  | 2018-09-04 09:00 | 2018-09-06 11:48 | 0.72d |  | Lucas; Kevin; Rodrigo; Thiago | 12h | 12h | 1,800 | 1,800 | 1,800 |
| 19 | 1.2.1.3 | Revisar DRE |  | 0.35d | 2018-09-04 09:00 A | 2018-09-06 14:18 A | 18 | 100% |  |  | 2018-09-04 09:00 | 2018-09-06 14:18 | 0.35d |  | Rodrigo; Kevin; Lucas; Thiago | 5h | 5h | 750 | 750 | 750 |
| 20 | 1.2.1.4 | Submeter DRE para aprovação do cliente | milestone | 0d | 2018-09-04 09:00 A | 2018-09-04 09:00 A | 19 | 100% |  |  | 2018-09-04 09:00 | 2018-09-04 09:00 | 0d |  | Kevin; Lucas; Thiago; Rodrigo |  |  |  |  |  |
| 21 | 1.2.2 | **Matriz de rastreabilidade Bidirecional** |  | 2d | 2018-09-05 09:00 A | 2018-09-06 18:00 |  | 100% |  | 2018-09-06 14:26 | 2018-09-05 09:00 | 2018-09-06 18:00 | 2d |  |  | 15h | 15h | 2,250 | 2,250 | 2,250 |
| 22 | 1.2.2.1 | Elaborar MRB |  | 0.62d | 2018-09-05 09:00 A | 2018-09-06 13:30 A | 20 | 100% |  |  | 2018-09-05 09:00 | 2018-09-06 13:30 | 0.62d | finish no earlier than 2018-09-05 18:00 | Kevin; Lucas; Rodrigo; Thiago | 12h | 12h | 1,800 | 1,800 | 1,800 |
| 23 | 1.2.2.2 | Revisar MRB |  | 0.18d | 2018-09-06 11:10 A | 2018-09-06 14:26 A | 22 | 100% |  |  | 2018-09-06 11:10 | 2018-09-06 14:26 | 0.18d | finish no earlier than 2018-09-05 18:00 | Rodrigo; Kevin; Lucas; Thiago | 3h | 3h | 450 | 450 | 450 |
| 24 | 1.3 | **Projeto** |  | 3.25d? | 2018-09-06 11:37 A | 2018-09-11 14:38 A |  | 100% |  |  | 2018-09-06 11:37 | 2018-09-11 14:38 | 3.25d? |  |  | 14.67h | 14.67h | 2,527.5 | 2,527.5 | 2,527.5 |
| 25 | 1.3.1 | **Diagrama de Classes** |  | 0.25d? | 2018-09-06 11:37 A | 2018-09-06 14:38 A |  | 100% |  |  | 2018-09-06 11:37 | 2018-09-06 14:38 | 0.25d? |  |  | 4.83h | 4.83h | 877.5 | 877.5 | 877.5 |
| 26 | 1.3.1.1 | Elaborar Diagrama de Classes |  | 0.1d? | 2018-09-06 11:37 A | 2018-09-06 14:13 A | 23 | 100% |  |  | 2018-09-06 11:37 | 2018-09-06 14:13 | 0.1d? |  | Lucas; Adler; Kevin; Rodrigo; Thiago | 3h | 3h | 540 | 540 | 540 |
| 27 | 1.3.1.2 | Revisar Diagrama de Classes |  | 0.03d? | 2018-09-06 14:13 A | 2018-09-06 14:28 A | 26 | 100% |  |  | 2018-09-06 14:13 | 2018-09-06 14:28 | 0.03d? |  | Kevin; Thiago; Lucas; Adler; Rodrigo | 1h | 1h | 187.5 | 187.5 | 187.5 |
| 28 | 1.3.1.3 | Atualizar MRB |  | 0.02d? | 2018-09-06 14:28 A | 2018-09-06 14:38 A | 27 | 100% |  |  | 2018-09-06 14:28 | 2018-09-06 14:38 | 0.02d? |  | Lucas; Rodrigo; Adler; Kevin; Thiago | 0.83h | 0.83h | 150 | 150 | 150 |

| ID | WBS | Task | Type | Duration | Start | Finish | Predecessors | Complete | Actual finish | Baseline start | Baseline finish | Baseline duration | Total slack | Free slack | Constraint | Resources | Work | Actual work | Cost | Baseline cost | Actual cost |
| --- | --- | --- | --- | --- | --- | --- | --- | --- | --- | --- | --- | --- | --- | --- | --- | --- | --- | --- | --- | --- | --- |
| 29 | 1.3.2 | **Modelo Entidade Relacionamento** |  | 0.15d? | 2018-09-06 14:38 A | 2018-09-06 15:51 A |  | 100% |  | 2018-09-06 14:38 | 2018-09-06 15:51 | 0.15d? |  |  |  |  | 5.83h | 5.83h | 1,050 | 1,050 | 1,050 |
| 30 | 1.3.2.1 | Elaborar MER |  | 0.12d? | 2018-09-06 14:38 A | 2018-09-06 15:38 A | 28 | 100% |  | 2018-09-06 14:38 | 2018-09-06 15:38 | 0.12d? |  |  |  | Rodrigo; Lucas; Adler; Kevin; Thiago | 5h | 5h | 900 | 900 | 900 |
| 31 | 1.3.2.2 | Revisar MER |  | 0.02d? | 2018-09-06 15:38 A | 2018-09-06 15:51 A | 30 | 100% |  | 2018-09-06 15:38 | 2018-09-06 15:51 | 0.02d? |  |  |  | Lucas; Rodrigo; Adler; Kevin; Thiago | 0.83h | 0.83h | 150 | 150 | 150 |
| 32 | 1.3.3 | Elaborar Plano de Teste | manual | 1.42d | 2018-09-06 14:38 A | 2018-09-10 09:00 A | 28 | 100% |  | 2018-09-06 14:38 | 2018-09-10 09:00 | 1.42d |  |  |  | Kevin; Lucas; Rodrigo; Thiago | 1h | 1h | 150 | 150 | 150 |
| 33 | 1.3.4 | Revisar Plano de Teste | manual | 1d | 2018-09-07 14:38 A | 2018-09-10 14:38 A | 32 | 100% |  | 2018-09-07 14:38 | 2018-09-10 14:38 | 1d |  |  |  | Kevin; Lucas; Rodrigo; Thiago | 2h | 2h | 300 | 300 | 300 |
| 34 | 1.3.5 | Gerar Status Report | manual | 1d | 2018-09-10 14:38 A | 2018-09-11 14:38 A | 33 | 100% |  | 2018-09-10 14:38 | 2018-09-11 14:38 | 1d |  |  |  | Kevin; Lucas; Rodrigo; Thiago | 1h | 1h | 150 | 150 | 150 |
| 35 | 1.4 | **Planejamento** |  | 1d | 2018-09-06 09:00 A | 2018-09-06 18:00 |  | 100% | 2018-09-07 18:00 | 2018-09-06 09:00 | 2018-09-06 18:00 | 1d |  |  |  |  | 10.1h | 10.1h | 1,515 | 1,515 | 1,515 |
| 36 | 1.4.1 | **Estimativa de Tamanho Definitivo** |  | 1d | 2018-09-06 09:00 A | 2018-09-06 18:00 |  | 100% | 2018-09-06 09:48 | 2018-09-06 09:00 | 2018-09-06 18:00 | 1d |  |  |  |  | 2.73h | 2.73h | 410 | 410 | 410 |
| 37 | 1.4.1.1 | Elaborar Estimativa de Tamanho Definitiva |  | 0.1d? | 2018-09-06 09:00 A | 2018-09-06 09:48 A | 31 | 100% |  | 2018-09-06 09:00 | 2018-09-06 09:48 | 0.1d? |  |  |  | Kevin; Lucas; Rodrigo | 2.4h | 2.4h | 360 | 360 | 360 |
| 38 | 1.4.1.2 | Revisar Estimativa de Tamanho Definitiva |  | 0.04d? | 2018-09-06 09:00 A | 2018-09-06 09:20 A | 37 | 100% |  | 2018-09-06 09:00 | 2018-09-06 09:20 | 0.04d? |  |  |  | Lucas | 0.33h | 0.33h | 50 | 50 | 50 |
| 39 | 1.4.2 | **Cronograma Definitivo** |  | 0.4d? | 2018-09-06 09:00 A | 2018-09-06 13:12 |  | 100% | 2018-09-06 10:00 | 2018-09-06 09:00 | 2018-09-06 13:12 | 0.4d? |  |  |  |  | 5h | 5h | 750 | 750 | 750 |
| 40 | 1.4.2.1 | Elabora Cronograma Definitivo |  | 0.12d? | 2018-09-06 09:00 A | 2018-09-06 10:00 A | 38 | 100% |  | 2018-09-06 09:00 | 2018-09-06 10:00 | 0.12d? |  |  |  | Kevin; Lucas; Rodrigo | 3h | 3h | 450 | 450 | 450 |
| 41 | 1.4.2.2 | Revisar Cronograma Definitivo |  | 0.12d? | 2018-09-06 09:00 A | 2018-09-06 10:00 A | 40 | 100% |  | 2018-09-06 09:00 | 2018-09-06 10:00 | 0.12d? |  |  |  | Kevin; Rodrigo | 2h | 2h | 300 | 300 | 300 |
| 42 | 1.4.3 | **Estimativa de Custo Definitiva** |  | 0.12d | 2018-09-06 09:00 A | 2018-09-06 10:00 |  | 100% | 2018-09-07 18:00 | 2018-09-06 09:00 | 2018-09-06 10:00 | 0.12d |  |  |  |  | 2.37h | 2.37h | 355 | 355 | 355 |
| 43 | 1.4.3.1 | Elaborar Estimativa de Custo Definitiva |  | 0.05d? | 2018-09-06 09:00 A | 2018-09-06 09:24 A | 41 | 100% |  | 2018-09-06 09:00 | 2018-09-06 09:24 | 0.05d? |  |  |  | Kevin; Lucas; Rodrigo | 1.2h | 1.2h | 180 | 180 | 180 |
| 44 | 1.4.3.2 | Revisar Estimativa de Custo Definitiva |  | 0.02d? | 2018-09-06 09:00 A | 2018-09-06 09:10 A | 43 | 100% |  | 2018-09-06 09:00 | 2018-09-06 09:10 | 0.02d? |  |  |  | Lucas; Thiago | 0.17h | 0.17h | 25 | 25 | 25 |
| 45 | 1.4.3.3 | Submeter Estimativa de Custo e Tamanho para aprovação do cliente | milestone | 0d? | 2018-09-06 09:00 A | 2018-09-06 09:00 A | 44 | 100% |  | 2018-09-06 09:00 | 2018-09-06 09:00 | 0d? |  |  |  | Kevin; Thiago |  |  |  |  |  |
| 46 | 1.4.3.4 | Gerar Status Report | manual | 2d | 2018-09-06 09:00 A | 2018-09-07 18:00 A | 45 | 100% |  | 2018-09-06 09:00 | 2018-09-07 18:00 | 2d |  |  |  | Kevin; Lucas; Rodrigo; Thiago | 1h | 1h | 150 | 150 | 150 |
| 47 | 1.5 | **Implementação** |  | 17d | 2018-09-07 09:00 | 2018-10-01 18:00 |  |  |  | 2018-09-07 09:00 | 2018-10-01 18:00 | 17d |  |  |  |  | 132h |  | 19,799.75 | 19,799.75 |  |
| 48 | 1.5.1 | **Release 01** |  | 1.32d | 2018-09-07 09:00 | 2018-09-10 11:32 |  |  |  | 2018-09-07 09:00 | 2018-09-10 11:32 | 1.32d |  |  |  |  | 31h |  | 4,650 | 4,650 |  |
| 49 | 1.5.1.1 | **Implementação** |  | 0.68d? | 2018-09-07 09:00 | 2018-09-07 15:27 |  |  |  | 2018-09-07 09:00 | 2018-09-07 15:27 | 0.68d? |  |  |  |  | 20h |  | 3,000 | 3,000 |  |
| 50 | 1.5.1.1.1 | **[RFC01] Manter Usuário** |  | 0.68d? | 2018-09-07 09:00 | 2018-09-07 15:27 |  |  |  | 2018-09-07 09:00 | 2018-09-07 15:27 | 0.68d? |  |  |  |  | 13h |  | 1,950 | 1,950 |  |
| 51 | 1.5.1.1.1.1 | [RFS01] Cadastrar Usuário |  | 0.22d? | 2018-10-15 16:15 | 2018-10-15 18:00 | 45 |  |  | 2018-10-15 16:15 | 2018-10-15 18:00 | 0.22d? | 0.82d | 0d | finish no earlier than 2018-10-15 18:00 | Kevin; Lucas; Rodrigo; Thiago | 5h |  | 750 | 750 |  |
| 52 | 1.5.1.1.1.2 | [RFS02] Alterar Dados do Perfil de Cliente |  | 0.17d? | 2018-10-15 18:00 | 2018-10-16 09:40 | 51 |  |  | 2018-10-15 18:00 | 2018-10-16 09:40 | 0.17d? | 0.82d | 0d | start no earlier than 2018-09-07 09:00 | Kevin; Lucas; Rodrigo; Thiago | 2h |  | 300 | 300 |  |
| 53 | 1.5.1.1.1.3 | [RFS03] Requisição de perfil profissional |  | 0.08d? | 2018-10-16 09:40 | 2018-10-16 10:20 | 52 |  |  | 2018-10-16 09:40 | 2018-10-16 10:20 | 0.08d? | 0.82d | 0d | start no earlier than 2018-09-07 09:00 | Kevin; Lucas; Rodrigo; Thiago | 2h |  | 300 | 300 |  |
| 54 | 1.5.1.1.1.4 | [RFS04] Lista de requisições para perfil profissional |  | 0.16d? | 2018-10-16 10:20 | 2018-10-16 11:34 | 53 |  |  | 2018-10-16 10:20 | 2018-10-16 11:34 | 0.16d? | 0.71d | 0d | start no earlier than 2018-09-07 09:00 | Rodrigo; Kevin; Lucas; Thiago | 2h |  | 300 | 300 |  |
| 55 | 1.5.1.1.1.5 | [RFS05] Análise de requisição de perfil profissional |  | 0.11d? | 2018-10-16 11:34 | 2018-10-16 14:14 | 54 |  |  | 2018-10-16 11:34 | 2018-10-16 14:14 | 0.11d? | 0.58d | 0d | start no earlier than 2018-09-07 09:00 | Kevin; Lucas; Rodrigo; Thiago | 2h |  | 300 | 300 |  |

| ID | WBS | Task | Type | Duration | Start | Finish | Predecessors | Baseline start | Baseline finish | Baseline duration | Total slack | Free slack | Resources | Work | Cost | Baseline cost |
| --- | --- | --- | --- | --- | --- | --- | --- | --- | --- | --- | --- | --- | --- | --- | --- | --- |
| 56 | 1.5.1.1.2 | **[RFC07] Manter Login** |  | 0.16d? | 2018-10-16 10:27 | 2018-10-16 11:42 |  | 2018-10-16 10:27 | 2018-10-16 11:42 | 0.16d? | 0d |  |  | 7h | 1,050 | 1,050 |
| 57 | 1.5.1.1.2.1 | [RFS023] Cadastrar Login | manual | 0.03d | 2018-10-16 10:27 | 2018-10-16 10:39 | 55 | 2018-10-16 10:27 | 2018-10-16 10:39 | 0.03d |  |  | Kevin; Lucas; Rodrigo; Thiago | 4h | 600 | 600 |
| 58 | 1.5.1.1.2.2 | [RFS024] Consultar Login | manual | 0.03d | 2018-10-16 10:39 | 2018-10-16 10:51 | 57 | 2018-10-16 10:39 | 2018-10-16 10:51 | 0.03d |  |  | Kevin; Lucas; Rodrigo; Thiago | 1h | 150 | 150 |
| 59 | 1.5.1.1.2.3 | [RFS025] Alterar Login |  | 0.04d? | 2018-10-16 10:51 | 2018-10-16 11:12 | 58 | 2018-10-16 10:51 | 2018-10-16 11:12 | 0.04d? | 0.93d | 0d | Kevin; Lucas; Rodrigo; Thiago | 1h | 150 | 150 |
| 60 | 1.5.1.1.2.4 | [RFS026] Cancelar Login |  | 0.06d? | 2018-10-16 11:12 | 2018-10-16 11:42 | 59 | 2018-10-16 11:12 | 2018-10-16 11:42 | 0.06d? | 0.93d | 0.42d | Kevin; Lucas; Rodrigo; Thiago | 1h | 150 | 150 |
| 61 | 1.5.1.2 | **Teste Release 01** |  | 9d | 2018-10-16 16:04 | 2018-10-29 16:04 |  | 2018-10-16 16:04 | 2018-10-29 16:04 | 9d | 0d |  |  | 10h | 1,500 | 1,500 |
| 62 | 1.5.1.2.1 | **[RFC01] Manter Usuário** |  | 5d | 2018-10-16 16:04 | 2018-10-23 16:04 |  | 2018-10-16 16:04 | 2018-10-23 16:04 | 5d | 0d |  |  | 6h | 900 | 900 |
| 63 | 1.5.1.2.1.1 | [RFS01] Cadastrar Usuário | manual | 1d? | 2018-10-16 16:04 | 2018-10-17 16:04 | 60 | 2018-10-16 16:04 | 2018-10-17 16:04 | 1d? |  |  | Kevin; Lucas; Rodrigo; Thiago | 1h | 150 | 150 |
| 64 | 1.5.1.2.1.2 | [RFS02] Alterar Dados do Perfil de Cliente | manual | 1d? | 2018-10-17 16:04 | 2018-10-18 16:04 | 63 | 2018-10-17 16:04 | 2018-10-18 16:04 | 1d? |  |  | Kevin; Lucas; Rodrigo; Thiago | 1h | 150 | 150 |
| 65 | 1.5.1.2.1.3 | [RFS03] Requisição de perfil profissional | manual | 1d? | 2018-10-18 16:04 | 2018-10-19 16:04 | 64 | 2018-10-18 16:04 | 2018-10-19 16:04 | 1d? |  |  | Kevin; Lucas; Rodrigo; Thiago | 1h | 150 | 150 |
| 66 | 1.5.1.2.1.4 | [RFS04] Lista de requisições para perfil profissional | manual | 1d? | 2018-10-19 16:04 | 2018-10-22 16:04 | 65 | 2018-10-19 16:04 | 2018-10-22 16:04 | 1d? |  |  | Kevin; Lucas; Rodrigo; Thiago | 1h | 150 | 150 |
| 67 | 1.5.1.2.1.5 | [RFS05] Análise de requisição de perfil profissional | manual | 1d? | 2018-10-22 16:04 | 2018-10-23 16:04 | 66 | 2018-10-22 16:04 | 2018-10-23 16:04 | 1d? |  |  | Kevin; Lucas; Rodrigo; Thiago | 2h | 300 | 300 |
| 68 | 1.5.1.2.2 | **[RFC07] Manter Login** |  | 4d | 2018-10-23 16:04 | 2018-10-29 16:04 |  | 2018-10-23 16:04 | 2018-10-29 16:04 | 4d | 0d |  |  | 4h | 600 | 600 |
| 69 | 1.5.1.2.2.1 | [RFS023] Cadastrar Login | manual | 1d? | 2018-10-23 16:04 | 2018-10-24 16:04 | 67 | 2018-10-23 16:04 | 2018-10-24 16:04 | 1d? |  |  | Kevin; Lucas; Rodrigo; Thiago | 1h | 150 | 150 |
| 70 | 1.5.1.2.2.2 | [RFS024] Consultar Login | manual | 1d? | 2018-10-24 16:04 | 2018-10-25 16:04 | 69 | 2018-10-24 16:04 | 2018-10-25 16:04 | 1d? |  |  | Kevin; Lucas; Rodrigo; Thiago | 1h | 150 | 150 |
| 71 | 1.5.1.2.2.3 | [RFS025] Alterar Login | manual | 1d? | 2018-10-25 16:04 | 2018-10-26 16:04 | 70 | 2018-10-25 16:04 | 2018-10-26 16:04 | 1d? |  |  | Kevin; Lucas; Rodrigo; Thiago | 1h | 150 | 150 |
| 72 | 1.5.1.2.2.4 | [RFS026] Cancelar Login | manual | 1d? | 2018-10-26 16:04 | 2018-10-29 16:04 | 71 | 2018-10-26 16:04 | 2018-10-29 16:04 | 1d? |  |  | Kevin; Lucas; Rodrigo; Thiago | 1h | 150 | 150 |
| 73 | 1.5.1.3 | Gerar Status Report | manual | 1d? | 2018-10-29 16:04 | 2018-10-30 16:04 | 72 | 2018-10-29 16:04 | 2018-10-30 16:04 | 1d? |  |  | Kevin; Lucas; Rodrigo; Thiago | 1h | 150 | 150 |
| 74 | 1.5.2 | **Release 02** |  | 47.97d? | 2018-09-11 09:00 | 2018-11-15 17:44 |  | 2018-09-11 09:00 | 2018-11-15 17:44 | 47.97d? | 0d |  |  | 30h | 4,500 | 4,500 |
| 75 | 1.5.2.1 | **Implementação** |  | 8d | 2018-10-30 16:04 | 2018-11-09 16:04 |  | 2018-10-30 16:04 | 2018-11-09 16:04 | 8d | 0d |  |  | 19h | 2,850 | 2,850 |
| 76 | 1.5.2.1.1 | **[RFC03] Manter Serviço** |  | 4d | 2018-10-30 16:04 | 2018-11-05 16:04 |  | 2018-10-30 16:04 | 2018-11-05 16:04 | 4d | 0d |  |  | 10h | 1,500 | 1,500 |
| 77 | 1.5.2.1.1.1 | [RFS10] Solicitar Serviço | manual | 1d? | 2018-10-30 16:04 | 2018-10-31 16:04 | 73 | 2018-10-30 16:04 | 2018-10-31 16:04 | 1d? |  |  | Kevin; Lucas; Rodrigo; Thiago | 6h | 900 | 900 |
| 78 | 1.5.2.1.1.2 | [RFS11] Alterar Serviço | manual | 1d? | 2018-10-31 16:04 | 2018-11-01 16:04 | 77 | 2018-10-31 16:04 | 2018-11-01 16:04 | 1d? |  |  | Kevin; Lucas; Rodrigo; Thiago | 2h | 300 | 300 |
| 79 | 1.5.2.1.1.3 | [RFS12] Pesquisar Serviço | manual | 1d? | 2018-11-01 16:04 | 2018-11-02 16:04 | 78 | 2018-11-01 16:04 | 2018-11-02 16:04 | 1d? |  |  | Kevin; Lucas; Rodrigo; Thiago | 1h | 150 | 150 |
| 80 | 1.5.2.1.1.4 | [RFS13] Cancelar Serviço | manual | 1d? | 2018-11-02 16:04 | 2018-11-05 16:04 | 79 | 2018-11-02 16:04 | 2018-11-05 16:04 | 1d? |  |  | Kevin; Lucas; Rodrigo; Thiago | 1h | 150 | 150 |

| ID | WBS | Task | Type | Duration | Start | Finish | Predecessors | Baseline start | Baseline finish | Baseline duration | Total slack | Free slack | Resources | Work | Cost | Baseline cost |
| --- | --- | --- | --- | --- | --- | --- | --- | --- | --- | --- | --- | --- | --- | --- | --- | --- |
| 81 | 1.5.2.1.2 | **[RFC02] Manter Serviço Prestados no Calendário** |  | 4d | 2018-11-05 16:04 | 2018-11-09 16:04 |  | 2018-11-05 16:04 | 2018-11-09 16:04 | 4d | 0d |  |  | 9h | 1,350 | 1,350 |
| 82 | 1.5.2.1.2.1 | [RFS06] Cadastrar Serviço Prestados no Calendário | manual | 1d? | 2018-11-05 16:04 | 2018-11-06 16:04 | 80 | 2018-11-05 16:04 | 2018-11-06 16:04 | 1d? |  |  | Kevin; Lucas; Rodrigo; Thiago | 6h | 900 | 900 |
| 83 | 1.5.2.1.2.2 | [RFS07] Consultar Serviço Prestados no Calendário | manual | 1d? | 2018-11-06 16:04 | 2018-11-07 16:04 | 82 | 2018-11-06 16:04 | 2018-11-07 16:04 | 1d? |  |  | Kevin; Lucas; Rodrigo; Thiago | 1h | 150 | 150 |
| 84 | 1.5.2.1.2.3 | [RFS08] Alterar Cadastro de Serviço Prestados no Calendário | manual | 1d? | 2018-11-07 16:04 | 2018-11-08 16:04 | 83 | 2018-11-07 16:04 | 2018-11-08 16:04 | 1d? |  |  | Kevin; Lucas; Rodrigo; Thiago | 1h | 150 | 150 |
| 85 | 1.5.2.1.2.4 | [RFS09] Alterar Cadastro de Serviço no Calendário | manual | 1d? | 2018-11-08 16:04 | 2018-11-09 16:04 | 84 | 2018-11-08 16:04 | 2018-11-09 16:04 | 1d? |  |  | Kevin; Lucas; Rodrigo; Thiago | 1h | 150 | 150 |
| 86 | 1.5.2.2 | **Teste Release 02** |  | 2d | 2018-09-11 09:00 | 2018-09-12 18:00 |  | 2018-09-11 09:00 | 2018-09-12 18:00 | 2d |  |  |  | 10h | 1,500 | 1,500 |
| 87 | 1.5.2.2.1 | **[RFC03] Manter Serviço** |  | 4d? | 2018-11-09 16:04 | 2018-11-15 16:04 |  | 2018-11-09 16:04 | 2018-11-15 16:04 | 4d? | 0d |  |  | 5h | 750 | 750 |
| 88 | 1.5.2.2.1.1 | [RFS10] Solicitar Serviço | manual | 1d? | 2018-11-09 16:04 | 2018-11-12 16:04 | 85 | 2018-11-09 16:04 | 2018-11-12 16:04 | 1d? |  |  | Kevin; Lucas; Rodrigo; Thiago | 2h | 300 | 300 |
| 89 | 1.5.2.2.1.2 | [RFS11] Alterar Serviço | manual | 1d? | 2018-11-12 16:04 | 2018-11-13 16:04 | 88 | 2018-11-12 16:04 | 2018-11-13 16:04 | 1d? |  |  | Kevin; Lucas; Rodrigo; Thiago | 1h | 150 | 150 |
| 90 | 1.5.2.2.1.3 | [RFS12] Pesquisar Serviço | manual | 1d? | 2018-11-13 16:04 | 2018-11-14 16:04 | 89 | 2018-11-13 16:04 | 2018-11-14 16:04 | 1d? |  |  | Kevin; Lucas; Rodrigo; Thiago | 1h | 150 | 150 |
| 91 | 1.5.2.2.1.4 | [RFS13] Cancelar Serviço | manual | 1d? | 2018-11-14 16:04 | 2018-11-15 16:04 | 90 | 2018-11-14 16:04 | 2018-11-15 16:04 | 1d? |  |  | Kevin; Lucas; Rodrigo; Thiago | 1h | 150 | 150 |
| 92 | 1.5.2.2.2 | **[RFC02] Manter Serviço Prestados no Calendário** |  | 0.21d? | 2018-11-15 16:04 | 2018-11-15 17:44 |  | 2018-11-15 16:04 | 2018-11-15 17:44 | 0.21d? | 0.51d |  |  | 5h | 750 | 750 |
| 93 | 1.5.2.2.2.1 | [RFS06] Cadastrar Serviço Prestados no Calendário |  | 0.08d? | 2018-11-15 16:04 | 2018-11-15 16:44 | 91 | 2018-11-15 16:04 | 2018-11-15 16:44 | 0.08d? | 0.51d | 0d | Kevin; Lucas; Rodrigo; Thiago | 2h | 300 | 300 |
| 94 | 1.5.2.2.2.2 | [RFS07] Consultar Serviço Prestados no Calendário |  | 0.04d? | 2018-11-15 16:44 | 2018-11-15 17:04 | 93 | 2018-11-15 16:44 | 2018-11-15 17:04 | 0.04d? | 0.51d | 0d | Kevin; Lucas; Rodrigo; Thiago | 1h | 150 | 150 |
| 95 | 1.5.2.2.2.3 | [RFS08] Alterar Cadastro de Serviço Prestados no Calendário |  | 0.04d? | 2018-11-15 17:04 | 2018-11-15 17:24 | 94 | 2018-11-15 17:04 | 2018-11-15 17:24 | 0.04d? | 0.64d | 0d | Rodrigo; Lucas; Kevin; Thiago | 1h | 150 | 150 |
| 96 | 1.5.2.2.2.4 | [RFS09] Alterar Cadastro de Serviço no Calendário |  | 0.04d? | 2018-11-15 17:24 | 2018-11-15 17:44 | 95 | 2018-11-15 17:24 | 2018-11-15 17:44 | 0.04d? | 0.64d | 0d | Rodrigo; Lucas; Kevin; Thiago | 1h | 150 | 150 |
| 97 | 1.5.2.3 | Gerar Status Report | manual | 1d? | 2018-09-11 15:00 | 2018-09-12 15:00 | 96 | 2018-09-11 15:00 | 2018-09-12 15:00 | 1d? |  |  | Kevin; Lucas; Rodrigo; Thiago | 1h | 150 | 150 |
| 98 | 1.5.3 | **Release 03** |  | 3d | 2018-09-12 09:00 | 2018-09-14 18:00 |  | 2018-09-12 09:00 | 2018-09-14 18:00 | 3d |  |  |  | 34h | 5,099.75 | 5,099.75 |
| 99 | 1.5.3.1 | **Implementação** |  | 3d | 2018-09-12 09:00 | 2018-09-14 18:00 |  | 2018-09-12 09:00 | 2018-09-14 18:00 | 3d |  |  |  | 24h | 3,600 | 3,600 |
| 100 | 1.5.3.1.1 | **[RFC06] Manter Album** |  | 0.23d? | 2018-09-12 09:00 | 2018-09-12 10:48 |  | 2018-09-12 09:00 | 2018-09-12 10:48 | 0.23d? |  |  |  | 12h | 1,800 | 1,800 |
| 101 | 1.5.3.1.1.1 | [RFS19] Cadastrar Foto no Album |  | 0.38d? | 2018-11-15 17:44 | 2018-11-16 10:44 | 96 | 2018-11-15 17:44 | 2018-11-16 10:44 | 0.38d? | 0.64d | 0d | Rodrigo; Lucas; Kevin; Thiago | 6h | 900 | 900 |
| 102 | 1.5.3.1.1.2 | [RFS20] Alterar Foto no Album |  | 0.08d? | 2018-11-16 10:44 | 2018-11-16 11:24 | 101 | 2018-11-16 10:44 | 2018-11-16 11:24 | 0.08d? | 0.64d | 0d | Kevin; Lucas; Rodrigo; Thiago | 2h | 300 | 300 |
| 103 | 1.5.3.1.1.3 | [RFS21] Consultar Foto no Album |  | 0.09d? | 2018-11-16 11:24 | 2018-11-16 14:04 | 102 | 2018-11-16 11:24 | 2018-11-16 14:04 | 0.09d? | 0.51d | 0d | Lucas; Kevin; Rodrigo; Thiago | 2h | 300 | 300 |
| 104 | 1.5.3.1.1.4 | [RFS22] Remover Foto no Album |  | 0.08d? | 2018-11-16 14:04 | 2018-11-16 14:44 | 103 | 2018-11-16 14:04 | 2018-11-16 14:44 | 0.08d? | 0.51d | 0.29d | Lucas; Kevin; Rodrigo; Thiago | 2h | 300 | 300 |

| ID | WBS | Task | Type | Duration | Start | Finish | Predecessors | Baseline start | Baseline finish | Baseline duration | Total slack | Free slack | Constraint | Resources | Work | Cost | Baseline cost |
| --- | --- | --- | --- | --- | --- | --- | --- | --- | --- | --- | --- | --- | --- | --- | --- | --- | --- |
| 105 | 1.5.3.1.2 | **[RFC08] CRUD Rodrigo** |  | 4d | 2018-11-16 17:04 | 2018-11-22 17:04 |  | 2018-11-16 17:04 | 2018-11-22 17:04 | 4d | 0d |  |  |  | 12h | 1,800 | 1,800 |
| 106 | 1.5.3.1.2.1 | [RFS10] Solicitar Serviço | manual | 1d? | 2018-11-16 17:04 | 2018-11-19 17:04 | 104 | 2018-11-16 17:04 | 2018-11-19 17:04 | 1d? |  |  |  | Kevin; Lucas; Rodrigo; Thiago | 6h | 900 | 900 |
| 107 | 1.5.3.1.2.2 | [RFS11] Alterar Serviço | manual | 1d? | 2018-11-19 17:04 | 2018-11-20 17:04 | 106 | 2018-11-19 17:04 | 2018-11-20 17:04 | 1d? |  |  |  | Kevin; Lucas; Rodrigo; Thiago | 2h | 300 | 300 |
| 108 | 1.5.3.1.2.3 | [RFS12] Pesquisar Serviço | manual | 1d? | 2018-11-20 17:04 | 2018-11-21 17:04 | 107 | 2018-11-20 17:04 | 2018-11-21 17:04 | 1d? |  |  |  | Kevin; Lucas; Rodrigo; Thiago | 2h | 300 | 300 |
| 109 | 1.5.3.1.2.4 | [RFS13] Cancelar Serviço | manual | 1d? | 2018-11-21 17:04 | 2018-11-22 17:04 | 108 | 2018-11-21 17:04 | 2018-11-22 17:04 | 1d? |  |  |  | Kevin; Lucas; Rodrigo; Thiago | 2h | 300 | 300 |
| 110 | 1.5.3.2 | **Teste Release 03** |  | 2d | 2018-09-13 09:00 | 2018-09-14 18:00 |  | 2018-09-13 09:00 | 2018-09-14 18:00 | 2d |  |  |  |  | 9h | 1,349.75 | 1,349.75 |
| 111 | 1.5.3.2.1 | **[RFC06] Manter Album** |  | 2d | 2018-09-13 09:00 | 2018-09-14 18:00 |  | 2018-09-13 09:00 | 2018-09-14 18:00 | 2d |  |  |  |  | 4h | 599.75 | 599.75 |
| 112 | 1.5.3.2.1.1 | [RFS19] Cadastrar Foto no Album |  | 0.06d? | 2018-11-22 17:04 | 2018-11-23 08:24 | 109 | 2018-11-22 17:04 | 2018-11-23 08:24 | 0.06d? | 0.22d | 0d |  | Rodrigo; Lucas; Kevin; Thiago | 1h | 149.99 | 149.99 |
| 113 | 1.5.3.2.1.2 | [RFS20] Alterar Foto no Album |  | 0.08d? | 2018-11-23 08:24 | 2018-11-23 09:26 | 112 | 2018-11-23 08:24 | 2018-11-23 09:26 | 0.08d? | 0.27d | 0d |  | Kevin; Lucas; Rodrigo; Thiago | 1h | 149.75 | 149.75 |
| 114 | 1.5.3.2.1.3 | [RFS21] Consultar Foto no Album |  | 0.04d? | 2018-11-23 09:26 | 2018-11-23 09:47 | 113 | 2018-11-23 09:26 | 2018-11-23 09:47 | 0.04d? | 0.27d | 0d |  | Lucas; Kevin; Rodrigo; Thiago | 1h | 150 | 150 |
| 115 | 1.5.3.2.1.4 | [RFS22] Remover Foto no Album |  | 0.04d? | 2018-11-23 09:47 | 2018-11-23 10:08 | 114 | 2018-11-23 09:47 | 2018-11-23 10:08 | 0.04d? | 0.27d |  |  | Lucas; Kevin; Rodrigo; Thiago | 1h | 150 | 150 |
| 116 | 1.5.3.2.2 | **[RFC08] CRUD Rodrigo** |  | 4d | 2018-11-23 14:16 | 2018-11-29 14:16 |  | 2018-11-23 14:16 | 2018-11-29 14:16 | 4d | 0d |  |  |  | 5h | 750 | 750 |
| 117 | 1.5.3.2.2.1 | [RFS10] Solicitar Serviço | manual | 1d? | 2018-11-23 14:16 | 2018-11-26 14:16 | 115 | 2018-11-23 14:16 | 2018-11-26 14:16 | 1d? |  |  |  | Kevin; Lucas; Rodrigo; Thiago | 2h | 300 | 300 |
| 118 | 1.5.3.2.2.2 | [RFS11] Alterar Serviço | manual | 1d? | 2018-11-26 14:16 | 2018-11-27 14:16 | 117 | 2018-11-26 14:16 | 2018-11-27 14:16 | 1d? |  |  |  | Kevin; Lucas; Rodrigo; Thiago | 1h | 150 | 150 |
| 119 | 1.5.3.2.2.3 | [RFS12] Pesquisar Serviço | manual | 1d? | 2018-11-27 14:16 | 2018-11-28 14:16 | 118 | 2018-11-27 14:16 | 2018-11-28 14:16 | 1d? |  |  |  | Kevin; Lucas; Rodrigo; Thiago | 1h | 150 | 150 |
| 120 | 1.5.3.2.2.4 | [RFS13] Cancelar Serviço | manual | 1d? | 2018-11-28 14:16 | 2018-11-29 14:16 | 119 | 2018-11-28 14:16 | 2018-11-29 14:16 | 1d? |  |  |  | Kevin; Lucas; Rodrigo; Thiago | 1h | 150 | 150 |
| 121 | 1.5.3.3 | Gerar Status Report | manual | 1d? | 2018-11-29 14:16 | 2018-11-30 14:16 | 120 | 2018-11-29 14:16 | 2018-11-30 14:16 | 1d? |  |  |  | Kevin; Lucas; Rodrigo; Thiago | 1h | 150 | 150 |
| 122 | 1.5.4 | **Release 04** |  | 2d | 2018-09-14 09:00 | 2018-09-17 18:00 |  | 2018-09-14 09:00 | 2018-09-17 18:00 | 2d |  |  |  |  | 37h | 5,550 | 5,550 |
| 123 | 1.5.4.1 | **Implementação** |  | 1.51d? | 2018-09-14 09:00 | 2018-09-17 14:06 |  | 2018-09-14 09:00 | 2018-09-17 14:06 | 1.51d? |  |  |  |  | 28h | 4,200 | 4,200 |
| 124 | 1.5.4.1.1 | **[RFC04] Manter Avaliação de Serviço** |  | 2d | 2018-09-14 09:00 | 2018-09-17 18:00 |  | 2018-09-14 09:00 | 2018-09-17 18:00 | 2d |  |  |  |  | 12h | 1,800 | 1,800 |
| 125 | 1.5.4.1.1.1 | [RFS14] Cadastrar Avaliação de Serviço |  | 0.62d? | 2018-11-30 14:16 | 2018-12-03 09:16 | 121 | 2018-11-30 14:16 | 2018-12-03 09:16 | 0.62d? | -0.53d | 0d | start no earlier than 2018-09-14 09:00 | Kevin; Lucas; Rodrigo; Thiago | 5h | 750 | 750 |
| 126 | 1.5.4.1.1.2 | [RFS15] Alterar Avaliação de Serviço |  | 0.5d? | 2018-12-03 09:16 | 2018-12-03 15:16 | 125 | 2018-12-03 09:16 | 2018-12-03 15:16 | 0.5d? | -0.59d | 0d | start no earlier than 2018-09-14 09:00 | Kevin; Lucas; Rodrigo; Thiago | 4h | 600 | 600 |
| 127 | 1.5.4.1.1.3 | [RFS18] Remover Avaliação | manual | 1d | 2018-12-03 08:16 | 2018-12-03 17:16 | 126 | 2018-12-03 08:16 | 2018-12-03 17:16 | 1d |  |  |  | Kevin; Lucas; Rodrigo; Thiago | 3h | 450 | 450 |
| 128 | 1.5.4.1.2 | **[RFC05] Manter Avaliação de Cliente** |  | 3d | 2018-12-03 17:16 | 2018-12-06 17:16 |  | 2018-12-03 17:16 | 2018-12-06 17:16 | 3d | 0d |  |  |  | 12h | 1,800 | 1,800 |
| 129 | 1.5.4.1.2.1 | [RFS16] Cadastrar Avaliação de Cliente | manual | 1d? | 2018-12-03 17:16 | 2018-12-04 17:16 | 127 | 2018-12-03 17:16 | 2018-12-04 17:16 | 1d? |  |  |  | Kevin; Lucas; Rodrigo; Thiago | 6h | 900 | 900 |
| 130 | 1.5.4.1.2.2 | [RFS17] Alterar Avaliação de Cliente | manual | 1d? | 2018-12-04 17:16 | 2018-12-05 17:16 | 129 | 2018-12-04 17:16 | 2018-12-05 17:16 | 1d? |  |  |  | Kevin; Lucas; Rodrigo; Thiago | 3h | 450 | 450 |
| 131 | 1.5.4.1.2.3 | [RFS18] Remover Avaliação | manual | 1d? | 2018-12-05 17:16 | 2018-12-06 17:16 | 130 | 2018-12-05 17:16 | 2018-12-06 17:16 | 1d? |  |  |  | Kevin; Lucas; Rodrigo; Thiago | 3h | 450 | 450 |
| 132 | 1.5.4.1.3 | [RFS31] Emitir Relatório de Taxa de Serviços Realizados |  | 5.24d? | 2018-12-06 17:16 | 2018-12-14 10:09 | 131 | 2018-12-06 17:16 | 2018-12-14 10:09 | 5.24d? | 0.16d | 0d | finish no earlier than 2018-09-24 18:00 | Kevin; Lucas; Rodrigo; Thiago | 4h | 600 | 600 |

| ID | WBS | Task | Type | Duration | Start | Finish | Predecessors | Baseline start | Baseline finish | Baseline duration | Total slack | Free slack | Constraint | Resources | Work | Cost | Baseline cost |
| --- | --- | --- | --- | --- | --- | --- | --- | --- | --- | --- | --- | --- | --- | --- | --- | --- | --- |
| 133 | 1.5.4.2 | **Teste Release 04** |  | 0.5d | 2018-09-28 10:54 | 2018-09-28 15:54 |  | 2018-09-28 10:54 | 2018-09-28 15:54 | 0.5d |  |  |  |  | 8h | 1,200 | 1,200 |
| 134 | 1.5.4.2.1 | **[RFC04] Manter Avaliação de Serviço** |  | 0.76d | 2018-09-28 10:53 | 2018-09-28 18:00 |  | 2018-09-28 10:53 | 2018-09-28 18:00 | 0.76d |  |  |  |  | 3h | 450 | 450 |
| 135 | 1.5.4.2.1.1 | [RFS14] Cadastrar Avaliação de Serviço |  | 0.04d? | 2018-12-14 10:09 | 2018-12-14 10:30 | 132 | 2018-12-14 10:09 | 2018-12-14 10:30 | 0.04d? | 0.41d | 0d |  | Kevin; Lucas; Rodrigo; Thiago | 1h | 150 | 150 |
| 136 | 1.5.4.2.1.2 | [RFS15] Alterar Avaliação de Serviço |  | 0.04d? | 2018-12-14 10:30 | 2018-12-14 10:51 | 135 | 2018-12-14 10:30 | 2018-12-14 10:51 | 0.04d? | 0.41d | 0d |  | Kevin; Lucas; Rodrigo; Thiago | 1h | 150 | 150 |
| 137 | 1.5.4.2.1.3 | [RFS18] Remover Avaliação |  | 0.04d? | 2018-12-14 10:51 | 2018-12-14 11:12 | 136 | 2018-12-14 10:51 | 2018-12-14 11:12 | 0.04d? | 0.41d |  |  | Lucas; Kevin; Rodrigo; Thiago | 1h | 150 | 150 |
| 138 | 1.5.4.2.2 | **[RFC05] Manter Avaliação de Cliente** |  | 2.04d? | 2018-12-14 15:30 | 2018-12-18 15:51 |  | 2018-12-14 15:30 | 2018-12-18 15:51 | 2.04d? | 0d |  |  |  | 3h | 450 | 450 |
| 139 | 1.5.4.2.2.1 | [RFS16] Cadastrar Avaliação de Cliente | manual | 0.04d | 2018-12-14 15:30 | 2018-12-14 15:51 | 137 | 2018-12-14 15:30 | 2018-12-14 15:51 | 0.04d |  |  |  | Lucas; Kevin; Rodrigo; Thiago | 1h | 150 | 150 |
| 140 | 1.5.4.2.2.2 | [RFS17] Alterar Avaliação de Cliente | manual | 1d? | 2018-12-14 15:51 | 2018-12-17 15:51 | 139 | 2018-12-14 15:51 | 2018-12-17 15:51 | 1d? |  |  |  | Kevin; Lucas; Rodrigo; Thiago | 1h | 150 | 150 |
| 141 | 1.5.4.2.2.3 | [RFS18] Remover Avaliação | manual | 1d? | 2018-12-17 15:51 | 2018-12-18 15:51 | 140 | 2018-12-17 15:51 | 2018-12-18 15:51 | 1d? |  |  |  | Kevin; Lucas; Rodrigo; Thiago | 1h | 150 | 150 |
| 142 | 1.5.4.2.3 | [RFS31] Emitir Relatório de Taxa de Serviços Realizados |  | 0.25d? | 2018-12-18 15:51 | 2018-12-18 17:51 | 141 | 2018-12-18 15:51 | 2018-12-18 17:51 | 0.25d? | -0.12d | 0d |  | Lucas; Kevin; Rodrigo; Thiago | 2h | 300 | 300 |
| 143 | 1.5.4.3 | Gerar Status Report | manual | 1d? | 2018-12-18 16:51 | 2018-12-19 16:51 | 142 | 2018-12-18 16:51 | 2018-12-19 16:51 | 1d? |  |  |  | Kevin; Lucas; Rodrigo; Thiago | 1h | 150 | 150 |
| 144 | 1.6 | **Monitoramento e Controle** |  | 1d | 2018-10-01 09:00 | 2018-10-01 18:00 |  | 2018-10-01 09:00 | 2018-10-01 18:00 | 1d |  |  |  |  | 5.28h | 1,584 | 1,584 |
| 145 | 1.6.1 | Acompanhar Projeto |  | 0.66d | 2018-12-18 17:51 | 2018-12-19 15:08 | 142 | 2018-12-18 17:51 | 2018-12-19 15:08 | 0.66d | 1.25d |  | start no earlier than 2018-10-01 09:00 | Adler | 5.28h | 1,584 | 1,584 |
| 146 | 1.7 | **Fechamento** |  | 0.6d? | 2018-10-01 09:00 | 2018-10-01 14:48 |  | 2018-10-01 09:00 | 2018-10-01 14:48 | 0.6d? |  |  |  |  | 16h | 2,400 | 2,400 |
| 147 | 1.7.1 | Realizar Revisão Total do Sistema |  | 0.68d? | 2018-12-19 16:51 | 2018-12-20 13:16 | 143 | 2018-12-19 16:51 | 2018-12-20 13:16 | 0.68d? | -0.53d | 0d | start no earlier than 2018-10-01 09:00 | Kevin; Lucas; Rodrigo; Thiago | 15h | 2,250 | 2,250 |
| 148 | 1.7.2 | Gerar Status Report | manual | 1d? | 2018-10-01 15:00 | 2018-10-02 15:00 | 147 | 2018-10-01 15:00 | 2018-10-02 15:00 | 1d? |  |  |  | Kevin; Lucas; Rodrigo; Thiago | 1h | 150 | 150 |
| 149 | 1.8 | **Controle de Mudanças** |  | 4d | 2018-10-01 09:00 | 2018-10-04 18:00 |  | 2018-10-01 09:00 | 2018-10-04 18:00 | 4d |  |  |  |  | 8h | 1,200 | 1,200 |
| 150 | 1.8.1 | Elaboração Documentação necessária para mudanças |  | 0.34d? | 2018-12-20 13:16 | 2018-12-20 16:00 | 147 | 2018-12-20 13:16 | 2018-12-20 16:00 | 0.34d? | 0d |  | finish no earlier than 2018-10-04 18:00 | Kevin; Lucas; Rodrigo | 6h | 900 | 900 |
| 151 | 1.8.2 | Revisar Documentação |  | 0.14d? | 2018-12-20 16:00 | 2018-12-20 17:08 | 150 | 2018-12-20 16:00 | 2018-12-20 17:08 | 0.14d? | 0d |  | finish no earlier than 2018-10-04 18:00 | Rodrigo; Lucas; Kevin | 2h | 300 | 300 |
